# Calendário do Projeto

Schedule from MS Project, 2023-01-04 to 2023-03-06.

## Calendars

- Padrão: Mon-Fri 09:00-13:00, 14:00-18:00; Sat 11:00-13:00, 15:00-20:00; Sun off.

## Resources

| Resource |
| --- |
| TC |
| FD |

## Schedule

| ID | WBS | Task | Duration | Start | Finish | Predecessors | Baseline start | Baseline finish | Baseline duration | Total slack | Resources | Work |
| --- | --- | --- | --- | --- | --- | --- | --- | --- | --- | --- | --- | --- |
| 1 | 1 | **Projeto "Horta IoT com arduino"** | 51d | 2023-01-04 | 2023-03-06 |  | 2023-01-04 | 2023-03-06 | 51d | 0d |  | 672h |
| 2 | 1.1 | **Criação do projeto** | 7d | 2023-01-04 | 2023-01-12 |  | 2023-01-04 | 2023-01-12 | 7d | 0d |  | 112h |
| 3 | 1.1.1 | Definição dos objetivos | 2d | 2023-01-04 | 2023-01-05 |  | 2023-01-04 | 2023-01-05 | 2d | 0d | FD; TC | 32h |
| 4 | 1.1.2 | Pesquisa de materiais e recursos necessários | 3d | 2023-01-06 | 2023-01-10 | 3 | 2023-01-06 | 2023-01-10 | 3d | 0d | FD; TC | 48h |
| 5 | 1.1.3 | Elaboração de um plano geral | 1d | 2023-01-10 | 2023-01-11 | 4 | 2023-01-10 | 2023-01-11 | 1d | 0d | FD; TC | 16h |
| 6 | 1.1.4 | Definição das especificações técnicas | 1d | 2023-01-11 | 2023-01-12 | 5 | 2023-01-11 | 2023-01-12 | 1d | 0d | FD; TC | 16h |
| 7 | 1.2 | **Planeamento do projeto** | 7d | 2023-01-12 | 2023-01-20 |  | 2023-01-12 | 2023-01-20 | 7d | 0d |  | 112h |
| 8 | 1.2.1 | Criação de um cronograma | 2d | 2023-01-12 | 2023-01-14 | 6 | 2023-01-12 | 2023-01-14 | 2d | 0d | FD; TC | 32h |
| 9 | 1.2.2 | Alocação de recursos | 1d | 2023-01-14 | 2023-01-16 | 8 | 2023-01-14 | 2023-01-16 | 1d | 0d | FD; TC | 16h |
| 10 | 1.2.3 | Estabelecimento de metas para cada fase do projeto | 1d | 2023-01-16 | 2023-01-17 | 9 | 2023-01-16 | 2023-01-17 | 1d | 0d | FD; TC | 16h |
| 11 | 1.2.4 | Elaboração de um plano financeiro | 1d | 2023-01-17 | 2023-01-18 | 10 | 2023-01-17 | 2023-01-18 | 1d | 0d | FD; TC | 16h |
| 12 | 1.2.5 | Definição das atividades a serem desenvolvidas | 2d | 2023-01-18 | 2023-01-20 | 11 | 2023-01-18 | 2023-01-20 | 2d | 0d | FD; TC | 32h |
| 13 | 1.3 | **Aquisição dos materiais** | 7d | 2023-01-20 | 2023-01-28 |  | 2023-01-20 | 2023-01-28 | 7d | 0d |  | 112h |
| 14 | 1.3.1 | Aquisição de todos os componentes eletrônicos necessários | 4d | 2023-01-20 | 2023-01-25 | 12 | 2023-01-20 | 2023-01-25 | 4d | 0d | FD; TC | 64h |
| 15 | 1.3.2 | Verificação da compatibilidade dos componentes | 1d | 2023-01-25 | 2023-01-26 | 14 | 2023-01-25 | 2023-01-26 | 1d | 0d | FD; TC | 16h |
| 16 | 1.3.3 | Preparação de todos os materiais necessários para a montagem do sistema | 2d | 2023-01-26 | 2023-01-28 | 15 | 2023-01-26 | 2023-01-28 | 2d | 0d | FD; TC | 32h |
| 17 | 1.4 | **Montagem do sistema** | 6d | 2023-01-28 | 2023-02-04 |  | 2023-01-28 | 2023-02-04 | 6d | 0d |  | 56h |
| 18 | 1.4.1 | Montagem dos componentes eletrônicos | 3d | 2023-01-28 | 2023-02-01 | 16 | 2023-01-28 | 2023-02-01 | 3d | 0d | TC | 24h |
| 19 | 1.4.2 | Configuração dos sensores de acordo com as especificações do projeto | 2d | 2023-02-01 | 2023-02-03 | 18 | 2023-02-01 | 2023-02-03 | 2d | 0d | FD | 16h |
| 20 | 1.4.3 | Teste e verificação do funcionamento dos componentes | 1d | 2023-02-03 | 2023-02-04 | 19 | 2023-02-03 | 2023-02-04 | 1d | 0d | FD; TC | 16h |
| 21 | 1.5 | **Programação do sistema** | 6d | 2023-02-04 | 2023-02-11 |  | 2023-02-04 | 2023-02-11 | 6d | 0d |  | 48h |
| 22 | 1.5.1 | **Programação do microcontrolador** | 5d | 2023-02-04 | 2023-02-10 |  | 2023-02-04 | 2023-02-10 | 5d | 0d |  | 40h |
| 23 | 1.5.1.1 | Coletar e processar os dados dos sensores | 1d | 2023-02-04 | 2023-02-06 | 20 | 2023-02-04 | 2023-02-06 | 1d | 0d | FD | 8h |
| 24 | 1.5.1.2 | Controlar o motor de rega | 2d | 2023-02-06 | 2023-02-08 | 23 | 2023-02-06 | 2023-02-08 | 2d | 0d | TC | 16h |
| 25 | 1.5.1.3 | Enviar alertas via WhatsApp | 2d | 2023-02-08 | 2023-02-10 | 24 | 2023-02-08 | 2023-02-10 | 2d | 0d | FD | 16h |
| 26 | 1.5.2 | Desenvolvimento de algoritmos para processamento de dados e automação do sistema | 1d | 2023-02-10 | 2023-02-11 | 25 | 2023-02-10 | 2023-02-11 | 1d | 0d | TC | 8h |

| ID | WBS | Task | Duration | Start | Finish | Predecessors | Baseline start | Baseline finish | Baseline duration | Total slack | Resources | Work |
| --- | --- | --- | --- | --- | --- | --- | --- | --- | --- | --- | --- | --- |
| 27 | 1.6 | **Construção do site** | 6d | 2023-02-11 | 2023-02-18 |  | 2023-02-11 | 2023-02-18 | 6d | 0d |  | 56h |
| 28 | 1.6.1 | Construção de um site para exibir em tempo real os dados coletados pelo sistema | 3d | 2023-02-11 | 2023-02-15 | 26 | 2023-02-11 | 2023-02-15 | 3d | 0d | FD | 24h |
| 29 | 1.6.2 | Desenvolvimento da base de dados | 2d | 2023-02-15 | 2023-02-17 | 28 | 2023-02-15 | 2023-02-17 | 2d | 0d | TC | 16h |
| 30 | 1.6.3 | Integração do site com o sistema | 1d | 2023-02-17 | 2023-02-18 | 29 | 2023-02-17 | 2023-02-18 | 1d | 0d | FD; TC | 16h |
| 31 | 1.7 | **Testes** | 5d | 2023-02-18 | 2023-02-24 |  | 2023-02-18 | 2023-02-24 | 5d | 0d |  | 64h |
| 32 | 1.7.1 | Realização de testes de campo para verificar a funcionalidade do sistema | 2d | 2023-02-18 | 2023-02-21 | 30 | 2023-02-18 | 2023-02-21 | 2d | 0d | FD; TC | 32h |
| 33 | 1.7.2 | Identificação de possíveis problemas | 1d | 2023-02-21 | 2023-02-22 | 32 | 2023-02-21 | 2023-02-22 | 1d | 0d | FD; TC | 16h |
| 34 | 1.7.3 | Teste de stress | 1d | 2023-02-22 | 2023-02-23 | 33 | 2023-02-22 | 2023-02-23 | 1d | 0d | FD | 8h |
| 35 | 1.7.4 | Teste de longa duração | 1d | 2023-02-23 | 2023-02-24 | 34 | 2023-02-23 | 2023-02-24 | 1d | 0d | TC | 8h |
| 36 | 1.8 | **Realização de ajustes** | 3d | 2023-02-24 | 2023-02-28 |  | 2023-02-24 | 2023-02-28 | 3d | 0d |  | 48h |
| 37 | 1.8.1 | Realização de ajustes no sistema, se necessário, para garantir o funcionamento correto | 2d | 2023-02-24 | 2023-02-27 | 35 | 2023-02-24 | 2023-02-27 | 2d | 0d | FD; TC | 32h |
| 38 | 1.8.2 | Teste final | 1d | 2023-02-28 | 2023-02-28 | 37 | 2023-02-28 | 2023-02-28 | 1d | 0d | FD; TC | 16h |
| 39 | 1.9 | **Conclusão do projeto** | 4d | 2023-03-01 | 2023-03-06 |  | 2023-03-01 | 2023-03-06 | 4d | 0d |  | 64h |
| 40 | 1.9.1 | Finalização do projeto | 1d | 2023-03-01 | 2023-03-01 | 38 | 2023-03-01 | 2023-03-01 | 1d | 0d | FD; TC | 16h |
| 41 | 1.9.2 | Finalização da documentação do projeto | 2d | 2023-03-02 | 2023-03-03 | 40 | 2023-03-02 | 2023-03-03 | 2d | 0d | FD; TC | 32h |
| 42 | 1.9.3 | Entrega do projeto | 1d | 2023-03-04 | 2023-03-06 | 41 | 2023-03-04 | 2023-03-06 | 1d | 0d | FD; TC | 16h |
